| percentDone | endDate | effort | schedulingMode | effortUnit | duration | name | id | durationUnit | startDate | calendar | leaf | ignoreResourceCalendar | milestone |
| --- | --- | --- | --- | --- | --- | --- | --- | --- | --- | --- | --- | --- | --- |
| 21.238938053097346 | 2011-03-31T16:00:00 | 0 | Normal | h | 1808 | Medor Adminstration Building | 11904 | h | 2010-07-07T08:00:00 |  |  |  |  |
| 100 | 2011-03-31T16:00:00 | 0 | Normal | h | 1808 | · General | 11905 | h | 2010-07-07T08:00:00 |  |  |  |  |
| 100 | 2010-07-07T08:00:00 | 0 | FixedDuration | h | 0 | · · Receiving IFC drawings | 90588 | h | 2010-07-07T08:00:00 | 841 | True | True | True |
| 100 | 2010-07-07T08:00:00 | 0 | FixedDuration | h | 0 | · · Receiving advance payement | 90589 | h | 2010-07-07T08:00:00 | 841 | True | True | True |
| 100 | 2010-07-10T00:00:00 | 0 | FixedDuration | h | 0 | · · start construction phase | 90590 | h | 2010-07-10T00:00:00 | 841 | True | True | True |
| 0 | 2011-03-31T16:00:00 | 0 | FixedDuration | h | 0 | · · finish construction | 90591 | h | 2011-03-31T16:00:00 | 841 | True | True | True |
| 66.66666666666666 | 2010-09-29T16:00:00 | 0 | Normal | h | 576 | · Engineering | 11907 | h | 2010-07-07T08:00:00 |  |  |  |  |
| 100 | 2010-07-07T16:00:00 | 0 |  | h | 8 | · · submit ground floor's shop drawings for approval | 90639 | h | 2010-07-07T08:00:00 | 841 | True | True |  |
| 100 | 2010-07-15T16:00:00 | 0 | FixedDuration | h | 0 | · · ground floor's shop drawings approval | 90640 | h | 2010-07-15T16:00:00 | 841 | True | True | True |
| 100 | 2010-07-12T16:00:00 | 0 |  | h | 8 | · · submit 1st floor shop drawings for approval | 90641 | h | 2010-07-12T08:00:00 | 841 | True | True |  |
| 100 | 2010-07-20T16:00:00 | 0 | FixedDuration | h | 0 | · · 1st floor shop drawings approval | 90642 | h | 2010-07-20T16:00:00 | 841 | True | True | True |
| 0 | 2010-09-01T16:00:00 | 0 |  | h | 8 | · · submit 2nd floor shop drawings for approval | 90643 | h | 2010-09-01T08:00:00 | 841 | True | True |  |
| 0 | 2010-09-11T16:00:00 | 0 | FixedDuration | h | 0 | · · 2nd floor shop drawings approval | 90644 | h | 2010-09-11T16:00:00 | 841 | True | True | True |
| 0 | 2010-09-06T16:00:00 | 0 |  | h | 8 | · · submit 3rd floor shop drawings for approval | 90645 | h | 2010-09-06T08:00:00 | 841 | True | True |  |
| 0 | 2010-09-15T16:00:00 | 0 | FixedDuration | h | 0 | · · 3rd floor shop drawings approval | 90646 | h | 2010-09-15T16:00:00 | 841 | True | True | True |
| 0 | 2010-09-12T16:00:00 | 0 |  | h | 8 | · · submit 4th floor shop drawings for approval | 90647 | h | 2010-09-12T08:00:00 | 841 | True | True |  |
| 0 | 2010-09-20T16:00:00 | 0 | FixedDuration | h | 0 | · · 4th floor shop drawings approval | 90648 | h | 2010-09-20T16:00:00 | 841 | True | True | True |
| 0 | 2010-09-16T16:00:00 | 0 |  | h | 8 | · · submit 5th floor shop drawings for approval | 90649 | h | 2010-09-16T08:00:00 | 841 | True | True |  |
| 0 | 2010-09-25T16:00:00 | 0 | FixedDuration | h | 0 | · · 5th floor shop drawings approval | 90650 | h | 2010-09-25T16:00:00 | 841 | True | True | True |
| 0 | 2010-09-21T16:00:00 | 0 |  | h | 8 | · · submit 6th floor shop drawings for approval | 90651 | h | 2010-09-21T08:00:00 | 841 | True | True |  |
| 0 | 2010-09-29T16:00:00 | 0 | FixedDuration | h | 0 | · · 6th floor shop drawings approval | 90652 | h | 2010-09-29T16:00:00 | 841 | True | True | True |
| 18.34862385321101 | 2011-03-31T16:00:00 | 0 | Normal | h | 1792 | · Skeleton | 11906 | h | 2010-07-10T00:00:00 |  |  |  |  |
| 100 | 2010-08-07T00:00:00 | 0 | Normal | h | 192 | · · Ground Floor | 11908 | h | 2010-07-10T00:00:00 |  |  |  |  |
| 100 | 2010-07-27T00:00:00 | 0 |  | h | 72 | · · · columns Formwork & Rft. Part 2 | 90592 | h | 2010-07-17T08:00:00 | 841 | True | True |  |
| 100 | 2010-07-28T16:00:00 | 0 |  | h | 8 | · · · Columns Pouring Part2 | 90593 | h | 2010-07-28T00:00:00 | 841 | True | True |  |
| 100 | 2010-07-16T00:00:00 | 0 |  | h | 48 | · · · Slab Formwork & Rft. Part1 | 90594 | h | 2010-07-10T00:00:00 | 841 | True | True |  |
| 100 | 2010-08-05T00:00:00 | 0 |  | h | 48 | · · · Slab Formwork & Rft. Part2 | 90595 | h | 2010-07-29T08:00:00 | 841 | True | True |  |
| 100 | 2010-08-07T00:00:00 | 0 |  | h | 0 | · · · Slab Pouring | 90596 | h | 2010-08-07T00:00:00 | 841 | True | True |  |
| 62.06896551724138 | 2010-09-14T16:00:00 | 0 | Normal | h | 256 | · · 1st Floor | 11909 | h | 2010-08-08T00:00:00 |  |  |  |  |
| 100 | 2010-08-24T00:00:00 | 0 |  | h | 112 | · · · columns Formwork & Rft. Part1 | 90597 | h | 2010-08-08T00:00:00 | 841 | True | True |  |
| 100 | 2010-08-25T16:00:00 | 0 |  | h | 8 | · · · Columns Pouring Part1 | 90598 | h | 2010-08-25T00:00:00 | 841 | True | True |  |
| 100 | 2010-08-29T00:00:00 | 0 |  | h | 48 | · · · columns Formwork & Rft. Part 2 | 90599 | h | 2010-08-22T08:00:00 | 841 | True | True |  |
| 0 | 2010-09-13T16:00:00 | 0 |  | h | 120 | · · · Slab Formwork & Rft. Part1 | 90601 | h | 2010-08-26T00:00:00 | 841 | True | True |  |
| 100 | 2010-08-30T00:00:00 | 0 |  | h | 0 | · · · Columns Pouring Part2 | 90600 | h | 2010-08-30T00:00:00 | 841 | True | True |  |
| 20 | 2010-09-11T16:00:00 | 0 |  | h | 72 | · · · Slab Formwork & Rft. Part2 | 90602 | h | 2010-08-31T00:00:00 | 841 | True | True |  |
| 0 | 2010-09-14T16:00:00 | 0 |  | h | 8 | · · · Slab Pouring | 90603 | h | 2010-09-14T08:00:00 | 841 | True | True |  |
| 0 | 2010-10-20T16:00:00 | 0 | Normal | h | 240 | · · 2nd Floor | 11910 | h | 2010-09-16T08:00:00 |  |  |  |  |
| 0 | 2010-09-25T16:00:00 | 0 |  | h | 64 | · · · columns Formwork & Rft. Part1 | 90604 | h | 2010-09-16T08:00:00 | 841 | True | True |  |
| 0 | 2010-09-26T16:00:00 | 0 |  | h | 8 | · · · Columns Pouring Part1 | 90605 | h | 2010-09-26T08:00:00 | 841 | True | True |  |
| 0 | 2010-10-04T16:00:00 | 0 |  | h | 64 | · · · columns Formwork & Rft. Part 2 | 90606 | h | 2010-09-26T08:00:00 | 841 | True | True |  |
| 0 | 2010-10-09T16:00:00 | 0 |  | h | 80 | · · · Slab Formwork & Rft. Part1 | 90608 | h | 2010-09-28T08:00:00 | 841 | True | True |  |
| 0 | 2010-10-05T16:00:00 | 0 |  | h | 8 | · · · Columns Pouring Part2 | 90607 | h | 2010-10-05T08:00:00 | 841 | True | True |  |
| 0 | 2010-10-19T16:00:00 | 0 |  | h | 80 | · · · Slab Formwork & Rft. Part2 | 90609 | h | 2010-10-09T08:00:00 | 841 | True | True |  |
| 0 | 2010-10-20T16:00:00 | 0 |  | h | 8 | · · · Slab Pouring | 90610 | h | 2010-10-20T08:00:00 | 841 | True | True |  |
| 0 | 2010-11-28T16:00:00 | 0 | Normal | h | 232 | · · 3rd Floor | 11911 | h | 2010-10-23T08:00:00 |  |  |  |  |
| 0 | 2010-10-31T16:00:00 | 0 |  | h | 64 | · · · columns Formwork & Rft. Part1 | 90611 | h | 2010-10-23T08:00:00 | 841 | True | True |  |
| 0 | 2010-11-01T16:00:00 | 0 |  | h | 8 | · · · Columns Pouring Part1 | 90612 | h | 2010-11-01T08:00:00 | 841 | True | True |  |
| 0 | 2010-11-08T16:00:00 | 0 |  | h | 64 | · · · columns Formwork & Rft. Part 2 | 90613 | h | 2010-10-31T08:00:00 | 841 | True | True |  |
| 0 | 2010-11-14T16:00:00 | 0 |  | h | 80 | · · · Slab Formwork & Rft. Part1 | 90615 | h | 2010-11-03T08:00:00 | 841 | True | True |  |
| 0 | 2010-11-09T16:00:00 | 0 |  | h | 8 | · · · Columns Pouring Part2 | 90614 | h | 2010-11-09T08:00:00 | 841 | True | True |  |
| 0 | 2010-11-27T16:00:00 | 0 |  | h | 80 | · · · Slab Formwork & Rft. Part2 | 90616 | h | 2010-11-13T08:00:00 | 841 | True | True |  |
| 0 | 2010-11-28T16:00:00 | 0 |  | h | 8 | · · · Slab Pouring | 90617 | h | 2010-11-28T08:00:00 | 841 | True | True |  |
| 0 | 2011-01-02T16:00:00 | 0 | Normal | h | 232 | · · 4th Floor | 11912 | h | 2010-11-30T08:00:00 |  |  |  |  |
| 0 | 2010-12-08T16:00:00 | 0 |  | h | 64 | · · · columns Formwork & Rft. Part1 | 90618 | h | 2010-11-30T08:00:00 | 841 | True | True |  |
| 0 | 2010-12-09T16:00:00 | 0 |  | h | 8 | · · · Columns Pouring Part1 | 90619 | h | 2010-12-09T08:00:00 | 841 | True | True |  |
| 0 | 2010-12-16T16:00:00 | 0 |  | h | 64 | · · · columns Formwork & Rft. Part 2 | 90620 | h | 2010-12-08T08:00:00 | 841 | True | True |  |
| 0 | 2010-12-22T16:00:00 | 0 |  | h | 80 | · · · Slab Formwork & Rft. Part1 | 90622 | h | 2010-12-12T08:00:00 | 841 | True | True |  |
| 0 | 2010-12-18T16:00:00 | 0 |  | h | 8 | · · · Columns Pouring Part2 | 90621 | h | 2010-12-18T08:00:00 | 841 | True | True |  |
| 0 | 2011-01-01T16:00:00 | 0 |  | h | 80 | · · · Slab Formwork & Rft. Part2 | 90623 | h | 2010-12-21T08:00:00 | 841 | True | True |  |
| 0 | 2011-01-02T16:00:00 | 0 |  | h | 8 | · · · Slab Pouring | 90624 | h | 2011-01-02T08:00:00 | 841 | True | True |  |
| 0 | 2011-02-06T16:00:00 | 0 | Normal | h | 232 | · · 5th Floor | 11913 | h | 2011-01-04T08:00:00 |  |  |  |  |
| 0 | 2011-01-12T16:00:00 | 0 |  | h | 64 | · · · columns Formwork & Rft. Part1 | 90625 | h | 2011-01-04T08:00:00 | 841 | True | True |  |
| 0 | 2011-01-13T16:00:00 | 0 |  | h | 8 | · · · Columns Pouring Part1 | 90626 | h | 2011-01-13T08:00:00 | 841 | True | True |  |
| 0 | 2011-01-20T16:00:00 | 0 |  | h | 64 | · · · columns Formwork & Rft. Part 2 | 90627 | h | 2011-01-12T08:00:00 | 841 | True | True |  |
| 0 | 2011-01-26T16:00:00 | 0 |  | h | 80 | · · · Slab Formwork & Rft. Part1 | 90629 | h | 2011-01-16T08:00:00 | 841 | True | True |  |
| 0 | 2011-01-22T16:00:00 | 0 |  | h | 8 | · · · Columns Pouring Part2 | 90628 | h | 2011-01-22T08:00:00 | 841 | True | True |  |
| 0 | 2011-02-05T16:00:00 | 0 |  | h | 80 | · · · Slab Formwork & Rft. Part2 | 90630 | h | 2011-01-25T08:00:00 | 841 | True | True |  |
| 0 | 2011-02-06T16:00:00 | 0 |  | h | 8 | · · · Slab Pouring | 90631 | h | 2011-02-06T08:00:00 | 841 | True | True |  |
| 0 | 2011-03-13T16:00:00 | 0 | Normal | h | 232 | · · 6th Floor | 11914 | h | 2011-02-08T08:00:00 |  |  |  |  |
| 0 | 2011-02-16T16:00:00 | 0 |  | h | 64 | · · · columns Formwork & Rft. Part1 | 90632 | h | 2011-02-08T08:00:00 | 841 | True | True |  |

| percentDone | endDate | effort | schedulingMode | effortUnit | duration | name | id | durationUnit | startDate | calendar | leaf | ignoreResourceCalendar |
| --- | --- | --- | --- | --- | --- | --- | --- | --- | --- | --- | --- | --- |
| 0 | 2011-02-17T16:00:00 | 0 |  | h | 8 | · · · Columns Pouring Part1 | 90633 | h | 2011-02-17T08:00:00 | 841 | True | True |
| 0 | 2011-02-24T16:00:00 | 0 |  | h | 64 | · · · columns Formwork & Rft. Part 2 | 90634 | h | 2011-02-16T08:00:00 | 841 | True | True |
| 0 | 2011-03-02T16:00:00 | 0 |  | h | 80 | · · · Slab Formwork & Rft. Part1 | 90636 | h | 2011-02-20T08:00:00 | 841 | True | True |
| 0 | 2011-02-26T16:00:00 | 0 |  | h | 8 | · · · Columns Pouring Part2 | 90635 | h | 2011-02-26T08:00:00 | 841 | True | True |
| 0 | 2011-03-12T16:00:00 | 0 |  | h | 80 | · · · Slab Formwork & Rft. Part2 | 90637 | h | 2011-03-01T08:00:00 | 841 | True | True |
| 0 | 2011-03-13T16:00:00 | 0 |  | h | 8 | · · · Slab Pouring | 90638 | h | 2011-03-13T08:00:00 | 841 | True | True |
| 0 | 2011-03-31T16:00:00 | 0 | Normal | h | 112 | · · Roof Floor | 11915 | h | 2011-03-16T08:00:00 |  |  |  |
| 0 | 2011-03-21T16:00:00 | 0 |  | h | 40 | · · · columns Formwork & Rft. | 90653 | h | 2011-03-16T08:00:00 | 841 | True | True |
| 0 | 2011-03-22T16:00:00 | 0 |  | h | 8 | · · · Columns Pouring | 90654 | h | 2011-03-22T08:00:00 | 841 | True | True |
| 0 | 2011-03-30T16:00:00 | 0 |  | h | 56 | · · · Slab Formwork & Rft. | 90655 | h | 2011-03-23T08:00:00 | 841 | True | True |
| 0 | 2011-03-31T16:00:00 | 0 |  | h | 8 | · · · Slab Pouring | 90656 | h | 2011-03-31T08:00:00 | 841 | True | True |

Links (fromEvent, lag, id, lagUnit, type, toEvent):
- 90640 0 1 h 2 90590
- 90656 0 2 h 2 90591
- 90588 0 3 h 2 90639
- 90589 0 4 h 2 90639
- 90639 56 5 h 2 90640
- 90639 24 6 h 2 90641
- 90641 56 7 h 2 90642
- 90641 24 8 h 2 90643
- 90643 56 9 h 2 90644
- 90643 24 10 h 2 90645
- 90645 56 11 h 2 90646
- 90645 24 12 h 2 90647
- 90647 56 13 h 2 90648
- 90647 24 14 h 2 90649
- 90649 56 15 h 2 90650
- 90649 24 16 h 2 90651
- 90651 56 17 h 2 90652
- 90590 0 18 h 2 90592
- 90592 0 19 h 2 90593
- 90590 0 20 h 2 90594
- 90593 16 21 h 2 90595
- 90595 0 22 h 2 90596
- 90594 0 23 h 2 90596
- 90642 56 24 h 2 90597
- 90596 8 25 h 2 90597
- 90597 0 26 h 2 90598
- 90596 8 27 h 2 90599
- 90598 -8 28 h 2 90599
- 90598 8 29 h 2 90601
- 90599 0 30 h 2 90600
- 90600 16 31 h 2 90602
- 90602 0 32 h 2 90603
- 90601 0 33 h 2 90603
- 90603 8 34 h 2 90604
- 90604 0 35 h 2 90605
- 90603 8 36 h 2 90606
- 90605 -8 37 h 2 90606
- 90605 8 38 h 2 90608
- 90606 0 39 h 2 90607
- 90607 16 40 h 2 90609
- 90609 0 41 h 2 90610
- 90608 0 42 h 2 90610
- 90610 8 43 h 2 90611
- 90611 0 44 h 2 90612
- 90610 8 45 h 2 90613
- 90612 -16 46 h 2 90613
- 90612 8 47 h 2 90615
- 90613 0 48 h 2 90614
- 90614 16 49 h 2 90616
- 90616 0 50 h 2 90617
- 90615 0 51 h 2 90617
- 90617 8 52 h 2 90618
- 90618 0 53 h 2 90619
- 90617 8 54 h 2 90620
- 90619 -16 55 h 2 90620
- 90619 8 56 h 2 90622
- 90620 0 57 h 2 90621
- 90621 16 58 h 2 90623
- 90623 0 59 h 2 90624
- 90622 0 60 h 2 90624
- 90624 8 61 h 2 90625
- 90625 0 62 h 2 90626
- 90624 8 63 h 2 90627
- 90626 -16 64 h 2 90627
- 90626 8 65 h 2 90629
- 90627 0 66 h 2 90628
- 90628 16 67 h 2 90630
- 90630 0 68 h 2 90631
- 90629 0 69 h 2 90631
- 90631 8 70 h 2 90632
- 90632 0 71 h 2 90633
- 90631 8 72 h 2 90634
- 90633 -16 73 h 2 90634
- 90633 8 74 h 2 90636
- 90634 0 75 h 2 90635
- 90635 16 76 h 2 90637
- 90637 0 77 h 2 90638
- 90636 0 78 h 2 90638
- 90638 16 79 h 2 90653
- 90653 0 80 h 2 90654
- 90654 0 81 d 2 90655
- 90655 0 82 h 2 90656
