| percentDone | endDate | effort | schedulingMode | effortUnit | duration | name | id | durationUnit | startDate | rollup | milestone | leaf | constraintType | constraintDate |
| --- | --- | --- | --- | --- | --- | --- | --- | --- | --- | --- | --- | --- | --- | --- |
| 7 | 2027-12-13T17:00:00 | 768 | Normal | h | 1249 | Advancer shells | 0 | d | 2023-03-01T08:00:00 |  |  |  |  |  |
| 100 | 2025-07-01T08:00:00 | 0 | Normal | h | 0 | · Predecessor projects | 453 | d | 2025-07-01T08:00:00 | True | True |  |  |  |
| 100 | 2025-07-01T08:00:00 | 0 | FixedUnits | h | 0 | · · Mike Barry | 451 | d | 2025-07-01T08:00:00 |  | True | True | startnoearlierthan | 2025-07-01T08:00:00 |
| 100 | 2025-07-01T08:00:00 | 0 | FixedUnits | h | 0 | · · Conor O'Brien | 450 | d | 2025-07-01T08:00:00 |  | True | True | startnoearlierthan | 2025-07-01T08:00:00 |
| 100 | 2025-07-01T08:00:00 | 0 | FixedUnits | h | 0 | · · Keith Mcnamee | 449 | d | 2025-07-01T08:00:00 |  | True | True | startnoearlierthan | 2025-07-01T08:00:00 |
| 100 | 2025-11-03T17:00:00 | 0 | Normal | h | 90 | · Investigation | 7 | d | 2025-07-01T08:00:00 | True |  |  |  |  |
| 100 | 2025-07-28T17:00:00 | 0 | FixedUnits | h | 20 | · · Request from quotatiuon sent out | 800 | d | 2025-07-01T08:00:00 |  |  | True |  |  |
| 100 | 2025-08-25T17:00:00 | 0 | FixedUnits | h | 20 | · · Vendor reviews | 799 | d | 2025-07-29T08:00:00 |  |  | True |  |  |
| 100 | 2025-09-22T17:00:00 | 0 | FixedUnits | h | 20 | · · Vendor down selection | 798 | d | 2025-08-26T08:00:00 |  |  | True |  |  |
| 100 | 2025-10-06T17:00:00 | 0 | FixedUnits | h | 10 | · · Wait to communicate business award due to additional dtat required for the knob from Philips Med | 920 | d | 2025-09-23T08:00:00 |  |  | True |  |  |
| 100 | 2025-11-03T17:00:00 | 0 | FixedUnits | h | 20 | · · Purchase order placed | 797 | d | 2025-10-07T08:00:00 |  |  | True |  |  |
| 23 | 2026-04-07T17:00:00 | 0 | Normal | h | 131 | · Candidate/ Feasibility | 27 | d | 2025-10-07T08:00:00 | True |  |  |  |  |
| 81 | 2025-12-26T17:00:00 | 0 | Normal | h | 59 | · · Design changes | 822 | d | 2025-10-07T08:00:00 | True |  |  |  |  |
| 100 | 2025-11-03T17:00:00 | 0 | FixedUnits | h | 20 | · · · Kick off meetings with Jcare | 821 | d | 2025-10-07T08:00:00 |  |  | True |  |  |
| 97 | 2025-12-12T17:00:00 | 0 | FixedUnits | h | 29 | · · · Design Alignment | 820 | d | 2025-11-04T08:00:00 |  |  | True |  |  |
| 0 | 2025-12-19T17:00:00 | 0 | FixedUnits | h | 5 | · · · Mold flow analysis | 819 | d | 2025-12-15T08:00:00 |  |  | True |  |  |
| 0 | 2025-12-26T17:00:00 | 0 | FixedUnits | h | 5 | · · · Stakeholder alignment | 818 | d | 2025-12-22T08:00:00 |  |  | True |  |  |
| 0 | 2026-02-10T17:00:00 | 0 | Normal | h | 26 | · · Qual Plus | 816 | d | 2026-01-06T08:00:00 | True |  |  |  |  |
| 0 | 2026-01-19T17:00:00 | 0 | FixedUnits | h | 10 | · · · Draft | 815 | d | 2026-01-06T08:00:00 |  |  | True |  |  |
| 0 | 2026-01-26T17:00:00 | 0 | FixedUnits | h | 5 | · · · Internal review | 814 | d | 2026-01-20T08:00:00 |  |  | True |  |  |
| 0 | 2026-01-27T17:00:00 | 0 | FixedUnits | h | 1 | · · · Rout | 813 | d | 2026-01-27T08:00:00 |  |  | True |  |  |
| 0 | 2026-02-10T17:00:00 | 0 | FixedUnits | h | 10 | · · · Approval | 812 | d | 2026-01-28T08:00:00 |  |  | True |  |  |
| 0 | 2026-02-02T17:00:00 | 0 | Normal | h | 10 | · · DFMEA | 927 | d | 2026-01-20T08:00:00 | True |  |  |  |  |
| 0 | 2026-02-02T17:00:00 | 0 | FixedUnits | h | 10 | · · · Update DFMEA | 926 | d | 2026-01-20T08:00:00 |  |  | True |  |  |
| 0 | 2026-02-24T17:00:00 | 0 | Normal | h | 36 | · · DCA Numeric | 811 | d | 2026-01-06T08:00:00 | True |  |  |  |  |
| 0 | 2026-02-02T17:00:00 | 0 | FixedUnits | h | 20 | · · · Draft | 810 | d | 2026-01-06T08:00:00 |  |  | True |  |  |
| 0 | 2026-02-09T17:00:00 | 0 | FixedUnits | h | 5 | · · · Internal review | 809 | d | 2026-02-03T08:00:00 |  |  | True |  |  |
| 0 | 2026-02-10T17:00:00 | 0 | FixedUnits | h | 1 | · · · Rout | 808 | d | 2026-02-10T08:00:00 |  |  | True |  |  |
| 0 | 2026-02-24T17:00:00 | 0 | FixedUnits | h | 10 | · · · Approval | 807 | d | 2026-02-11T08:00:00 |  |  | True |  |  |
| 0 | 2026-02-10T17:00:00 | 0 | Normal | h | 26 | · · PCA Numeric | 806 | d | 2026-01-06T08:00:00 | True |  |  |  |  |
| 0 | 2026-01-19T17:00:00 | 0 | FixedUnits | h | 10 | · · · Draft | 805 | d | 2026-01-06T08:00:00 |  |  | True |  |  |
| 0 | 2026-01-26T17:00:00 | 0 | FixedUnits | h | 5 | · · · Internal review | 887 | d | 2026-01-20T08:00:00 |  |  | True |  |  |
| 0 | 2026-01-27T17:00:00 | 0 | FixedUnits | h | 1 | · · · Rout | 886 | d | 2026-01-27T08:00:00 |  |  | True |  |  |
| 0 | 2026-02-10T17:00:00 | 0 | FixedUnits | h | 10 | · · · Approval | 804 | d | 2026-01-28T08:00:00 |  |  | True |  |  |
| 0 | 2026-02-16T17:00:00 | 0 | Normal | h | 10 | · · Project planning | 893 | d | 2026-02-03T08:00:00 | True |  |  |  |  |
| 0 | 2026-02-16T17:00:00 | 0 | FixedUnits | h | 10 | · · · Project schedule | 892 | d | 2026-02-03T08:00:00 |  |  | True |  |  |
| 0 | 2026-02-16T17:00:00 | 0 | FixedUnits | h | 10 | · · · SEPM charter | 891 | d | 2026-02-03T08:00:00 |  |  | True |  |  |
| 0 | 2026-04-07T17:00:00 | 0 | Normal | h | 30 | · · Reg Assesmeny | 924 | d | 2026-02-24T17:00:00 | True |  |  |  |  |
| 0 | 2026-04-07T17:00:00 | 0 | FixedUnits | h | 30 | · · · <New Task> | 923 | d | 2026-02-25T08:00:00 |  |  | True |  |  |
| 0 | 2026-02-24T17:00:00 | 0 | FixedUnits | h | 0 | · · · Feasibility complete | 888 | d | 2026-02-24T17:00:00 |  | True | True |  |  |
| 0 | 2027-11-15T17:00:00 | 768 | Normal | h | 1229 | · Active / Execution | 75 | d | 2023-03-01T08:00:00 | True |  |  |  |  |
| 0 | 2026-01-27T17:00:00 | 0 | Normal | h | 16 | · · Part numbers | 931 | d | 2026-01-06T08:00:00 | True |  |  |  |  |
| 0 | 2026-01-12T17:00:00 | 0 | FixedUnits | h | 5 | · · · Draft | 930 | d | 2026-01-06T08:00:00 |  |  | True |  |  |
| 0 | 2026-01-13T17:00:00 | 0 | FixedUnits | h | 1 | · · · Rout | 929 | d | 2026-01-13T08:00:00 |  |  | True |  |  |
| 0 | 2026-01-27T17:00:00 | 0 | FixedUnits | h | 10 | · · · Approve | 928 | d | 2026-01-14T08:00:00 |  |  | True |  |  |
| 0 | 2026-02-18T17:00:00 | 0 | Normal | h | 32 | · · Drawing | 843 | d | 2026-01-06T08:00:00 | True |  |  |  |  |
| 0 | 2026-01-26T17:00:00 | 0 | FixedUnits | h | 15 | · · · Draft | 842 | d | 2026-01-06T08:00:00 |  |  | True |  |  |
| 0 | 2026-02-03T17:00:00 | 0 | FixedUnits | h | 5 | · · · Internal review | 850 | d | 2026-01-28T08:00:00 |  |  | True |  |  |
| 0 | 2026-02-04T17:00:00 | 0 | FixedUnits | h | 1 | · · · Rout | 841 | d | 2026-02-04T08:00:00 |  |  | True |  |  |
| 0 | 2026-02-18T17:00:00 | 0 | FixedUnits | h | 10 | · · · Approve | 840 | d | 2026-02-05T08:00:00 |  |  | True |  |  |
| 0 | 2026-02-18T17:00:00 | 0 | Normal | h | 32 | · · Spec map | 839 | d | 2026-01-06T08:00:00 | True |  |  |  |  |
| 0 | 2026-01-26T17:00:00 | 0 | FixedUnits | h | 15 | · · · Draft | 851 | d | 2026-01-06T08:00:00 |  |  | True |  |  |
| 0 | 2026-02-03T17:00:00 | 0 | FixedUnits | h | 5 | · · · Internal review | 848 | d | 2026-01-28T08:00:00 |  |  | True |  |  |
| 0 | 2026-02-04T17:00:00 | 0 | FixedUnits | h | 1 | · · · Rout | 847 | d | 2026-02-04T08:00:00 |  |  | True |  |  |
| 0 | 2026-02-18T17:00:00 | 0 | FixedUnits | h | 10 | · · · Approve | 846 | d | 2026-02-05T08:00:00 |  |  | True |  |  |
| 0 | 2026-04-09T17:00:00 | 0 | Normal | h | 68 | · · AAC | 845 | d | 2026-01-06T08:00:00 | True |  |  |  |  |
| 0 | 2026-01-26T17:00:00 | 0 | FixedUnits | h | 15 | · · · Initial draft of AAC | 873 | d | 2026-01-06T08:00:00 |  |  | True |  |  |
| 0 | 2026-02-25T17:00:00 | 0 | FixedUnits | h | 5 | · · · Draft | 849 | d | 2026-02-19T08:00:00 |  |  | True |  |  |
| 0 | 2026-03-04T17:00:00 | 0 | FixedUnits | h | 5 | · · · Internal review | 852 | d | 2026-02-26T08:00:00 |  |  | True |  |  |
| 0 | 2026-03-25T17:00:00 | 0 | FixedUnits | h | 15 | · · · Vendor TMV's & hard signing | 946 | d | 2026-03-05T08:00:00 |  |  | True |  |  |
| 0 | 2026-03-26T17:00:00 | 0 | FixedUnits | h | 1 | · · · Rout | 844 | d | 2026-03-26T08:00:00 |  |  | True |  |  |
| 0 | 2026-04-09T17:00:00 | 0 | FixedUnits | h | 10 | · · · Approve | 838 | d | 2026-03-27T08:00:00 |  |  | True |  |  |
| 0 | 2026-04-21T17:00:00 | 0 | Normal | h | 60 | · · eCMA | 942 | d | 2026-01-28T08:00:00 | True |  |  |  |  |
| 0 | 2026-02-03T17:00:00 | 0 | FixedUnits | h | 5 | · · · Material PIR - Link PN with supplier | 941 | d | 2026-01-28T08:00:00 |  |  | True |  |  |
| 0 | 2026-02-03T17:00:00 | 0 | FixedUnits | h | 5 | · · · Request eCMA resource | 943 | d | 2026-01-28T08:00:00 |  |  | True |  |  |
| 0 | 2026-02-24T17:00:00 | 0 | FixedUnits | h | 15 | · · · eCMA draft | 940 | d | 2026-02-04T08:00:00 |  |  | True |  |  |
| 0 | 2026-04-21T17:00:00 | 0 | FixedUnits | h | 40 | · · · eCMA approval | 939 | d | 2026-02-25T08:00:00 |  |  | True |  |  |
| 0 | 2026-03-17T17:00:00 | 0 | Normal | h | 15 | · · FAI PO | 938 | d | 2026-02-25T08:00:00 | True |  |  |  |  |
| 0 | 2026-03-03T17:00:00 | 0 | FixedUnits | h | 5 | · · · SAP Submittal form | 937 | d | 2026-02-25T08:00:00 |  |  | True |  |  |
| 0 | 2026-03-17T17:00:00 | 0 | FixedUnits | h | 10 | · · · Place FAI PO | 945 | d | 2026-03-04T08:00:00 |  |  | True |  |  |

| percentDone | endDate | effort | schedulingMode | effortUnit | duration | name | id | durationUnit | startDate | rollup | leaf |
| --- | --- | --- | --- | --- | --- | --- | --- | --- | --- | --- | --- |
| 0 | 2023-03-01T17:00:00 | 0 | Normal | h | 1 | · · RBIA | 949 | d | 2023-03-01T08:00:00 | True |  |
| 0 | 2023-03-01T17:00:00 | 0 | FixedUnits | h | 1 | · · · <New Task> | 948 | d | 2023-03-01T08:00:00 |  | True |
| 0 | 2023-03-01T17:00:00 | 0 | FixedUnits | h | 1 | · · · <New Task> | 947 | d | 2023-03-01T08:00:00 |  | True |
| 0 | 2023-03-01T17:00:00 | 0 | FixedUnits | h | 1 | · · · <New Task> | 951 | d | 2023-03-01T08:00:00 |  | True |
| 0 | 2023-03-01T17:00:00 | 0 | Normal | h | 1 | · · SAP IP | 944 | d | 2023-03-01T08:00:00 | True |  |
| 0 | 2023-03-01T17:00:00 | 0 | FixedUnits | h | 1 | · · · <New Task> | 954 | d | 2023-03-01T08:00:00 |  | True |
| 0 | 2023-03-01T17:00:00 | 0 | FixedUnits | h | 1 | · · · <New Task> | 953 | d | 2023-03-01T08:00:00 |  | True |
| 0 | 2023-03-01T17:00:00 | 0 | FixedUnits | h | 1 | · · · <New Task> | 952 | d | 2023-03-01T08:00:00 |  | True |
| 0 | 2023-03-01T17:00:00 | 0 | Normal | h | 1 | · · <New Task> | 957 | d | 2023-03-01T08:00:00 | True |  |
| 0 | 2023-03-01T17:00:00 | 0 | FixedUnits | h | 1 | · · · <New Task> | 956 | d | 2023-03-01T08:00:00 |  | True |
| 0 | 2023-03-01T17:00:00 | 0 | FixedUnits | h | 1 | · · · <New Task> | 955 | d | 2023-03-01T08:00:00 |  | True |
| 0 | 2023-03-01T17:00:00 | 0 | FixedUnits | h | 1 | · · · <New Task> | 936 | d | 2023-03-01T08:00:00 |  | True |
| 0 | 2023-03-01T17:00:00 | 0 | Normal | h | 1 | · · <New Task> | 935 | d | 2023-03-01T08:00:00 | True |  |
| 0 | 2023-03-01T17:00:00 | 0 | FixedUnits | h | 1 | · · · <New Task> | 950 | d | 2023-03-01T08:00:00 |  | True |
| 0 | 2023-03-01T17:00:00 | 0 | FixedUnits | h | 1 | · · · <New Task> | 934 | d | 2023-03-01T08:00:00 |  | True |
| 0 | 2023-03-01T17:00:00 | 0 | FixedUnits | h | 1 | · · · <New Task> | 933 | d | 2023-03-01T08:00:00 |  | True |
| 0 | 2026-06-22T17:00:00 | 0 | Normal | h | 120 | · · Tooling (24 weeks) | 837 | d | 2026-01-06T08:00:00 | True |  |
| 0 | 2026-02-02T17:00:00 | 0 | FixedUnits | h | 20 | · · · Tooling design | 871 | d | 2026-01-06T08:00:00 |  | True |
| 0 | 2026-02-23T17:00:00 | 0 | FixedUnits | h | 15 | · · · Procurment | 870 | d | 2026-02-03T08:00:00 |  | True |
| 0 | 2026-04-27T17:00:00 | 0 | FixedUnits | h | 45 | · · · Machining & Fabrication | 869 | d | 2026-02-24T08:00:00 |  | True |
| 0 | 2026-05-11T17:00:00 | 0 | FixedUnits | h | 10 | · · · Tooling first offs | 868 | d | 2026-04-28T08:00:00 |  | True |
| 0 | 2026-05-25T17:00:00 | 0 | FixedUnits | h | 10 | · · · Modification & Grooming | 867 | d | 2026-05-12T08:00:00 |  | True |
| 0 | 2026-06-08T17:00:00 | 0 | FixedUnits | h | 10 | · · · Tooling second offs | 895 | d | 2026-05-26T08:00:00 |  | True |
| 0 | 2026-06-22T17:00:00 | 0 | FixedUnits | h | 10 | · · · Modification & Grooming | 894 | d | 2026-06-09T08:00:00 |  | True |
| 0 | 2026-07-20T17:00:00 | 0 | Normal | h | 60 | · · OQ (+4 weeks) | 834 | d | 2026-04-28T08:00:00 | True |  |
| 0 | 2026-05-11T17:00:00 | 0 | FixedUnits | h | 10 | · · · Protocol | 833 | d | 2026-04-28T08:00:00 |  | True |
| 0 | 2026-07-06T17:00:00 | 0 | FixedUnits | h | 10 | · · · Execution | 832 | d | 2026-06-23T08:00:00 |  | True |
| 0 | 2026-07-20T17:00:00 | 0 | FixedUnits | h | 10 | · · · Approval | 831 | d | 2026-07-07T08:00:00 |  | True |
| 0 | 2026-08-17T17:00:00 | 0 | Normal | h | 70 | · · PQ (+4 weeks) | 829 | d | 2026-05-12T08:00:00 | True |  |
| 0 | 2026-05-25T17:00:00 | 0 | FixedUnits | h | 10 | · · · Protocol | 828 | d | 2026-05-12T08:00:00 |  | True |
| 0 | 2026-08-03T17:00:00 | 0 | FixedUnits | h | 10 | · · · Execution | 827 | d | 2026-07-21T08:00:00 |  | True |
| 0 | 2026-08-17T17:00:00 | 0 | FixedUnits | h | 10 | · · · Approval | 826 | d | 2026-08-04T08:00:00 |  | True |
| 0 | 2026-08-10T17:00:00 | 0 | FixedUnits | h | 5 | · · · Ship PQ units to Cork | 979 | d | 2026-08-04T08:00:00 |  | True |
| 0 | 2026-05-19T17:00:00 | 0 | Normal | h | 64 | · · Material qual Protocol | 825 | d | 2026-02-19T08:00:00 | True |  |
| 0 | 2026-02-25T17:00:00 | 0 | FixedUnits | h | 5 | · · · Initial draft of material Qual | 872 | d | 2026-02-19T08:00:00 |  | True |
| 0 | 2026-05-04T17:00:00 | 0 | FixedUnits | h | 5 | · · · Draft | 854 | d | 2026-04-28T08:00:00 |  | True |
| 0 | 2026-05-11T17:00:00 | 0 | FixedUnits | h | 5 | · · · Internal review | 853 | d | 2026-05-05T08:00:00 |  | True |
| 0 | 2026-05-12T17:00:00 | 0 | FixedUnits | h | 1 | · · · Rout | 824 | d | 2026-05-12T08:00:00 |  | True |
| 0 | 2026-05-19T17:00:00 | 0 | FixedUnits | h | 5 | · · · Approve | 823 | d | 2026-05-13T08:00:00 |  | True |
| 0 | 2026-09-22T17:00:00 | 0 | Normal | h | 26 | · · Material qual Report | 860 | d | 2026-08-18T08:00:00 | True |  |
| 0 | 2026-08-31T17:00:00 | 0 | FixedUnits | h | 10 | · · · Execute | 859 | d | 2026-08-18T08:00:00 |  | True |
| 0 | 2026-09-07T17:00:00 | 0 | FixedUnits | h | 5 | · · · Internal review | 858 | d | 2026-09-01T08:00:00 |  | True |
| 0 | 2026-09-08T17:00:00 | 0 | FixedUnits | h | 1 | · · · Rout | 857 | d | 2026-09-08T08:00:00 |  | True |
| 0 | 2026-09-22T17:00:00 | 0 | FixedUnits | h | 10 | · · · Approve | 856 | d | 2026-09-09T08:00:00 |  | True |
| 0 | 2026-06-12T17:00:00 | 0 | Normal | h | 18 | · · PC & PQ Protocol | 966 | d | 2026-05-20T08:00:00 | True |  |
| 0 | 2026-05-21T17:00:00 | 0 | FixedUnits | h | 2 | · · · NSMRs Creation for PC and PQ | 973 | d | 2026-05-20T08:00:00 |  | True |
| 0 | 2026-05-28T17:00:00 | 0 | FixedUnits | h | 5 | · · · Draft | 965 | d | 2026-05-22T08:00:00 |  | True |
| 0 | 2026-05-29T17:00:00 | 0 | FixedUnits | h | 1 | · · · Rout | 964 | d | 2026-05-29T08:00:00 |  | True |
| 0 | 2026-06-12T17:00:00 | 0 | FixedUnits | h | 10 | · · · Approve | 963 | d | 2026-06-01T08:00:00 |  | True |
| 0 | 2023-03-14T17:00:00 | 0 | Normal | h | 10 | · · TMV updates??? | 962 | d | 2023-03-01T08:00:00 | True |  |
| 0 | 2023-03-07T17:00:00 | 0 | FixedUnits | h | 5 | · · · Draft | 961 | d | 2023-03-01T08:00:00 |  | True |
| 0 | 2023-03-01T17:00:00 | 0 | FixedUnits | h | 1 | · · · Rout | 960 | d | 2023-03-01T08:00:00 |  | True |
| 0 | 2023-03-14T17:00:00 | 0 | FixedUnits | h | 10 | · · · Approve | 959 | d | 2023-03-01T08:00:00 |  | True |
| 0 | 2026-09-01T17:00:00 | 0 | Normal | h | 16 | · · Process Characterisation | 978 | d | 2026-08-11T08:00:00 | True |  |
| 0 | 2026-08-17T17:00:00 | 0 | FixedUnits | h | 5 | · · · Build PC & Test units | 977 | d | 2026-08-11T08:00:00 |  | True |
| 0 | 2026-08-24T17:00:00 | 0 | FixedUnits | h | 5 | · · · Draft report | 975 | d | 2026-08-18T08:00:00 |  | True |
| 0 | 2026-08-25T17:00:00 | 0 | FixedUnits | h | 1 | · · · Rout | 974 | d | 2026-08-25T08:00:00 |  | True |
| 0 | 2026-09-01T17:00:00 | 0 | FixedUnits | h | 5 | · · · Approval | 972 | d | 2026-08-26T08:00:00 |  | True |
| 0 | 2026-10-09T17:00:00 | 0 | Normal | h | 28 | · · Process Quilifacation | 971 | d | 2026-09-02T08:00:00 | True |  |
| 0 | 2026-09-10T17:00:00 | 0 | FixedUnits | h | 7 | · · · Build PQ units | 970 | d | 2026-09-02T08:00:00 |  | True |
| 0 | 2026-09-17T17:00:00 | 0 | FixedUnits | h | 5 | · · · Testing PQ units | 980 | d | 2026-09-11T08:00:00 |  | True |
| 0 | 2026-09-24T17:00:00 | 0 | FixedUnits | h | 5 | · · · Draft report | 969 | d | 2026-09-18T08:00:00 |  | True |
| 0 | 2026-09-25T17:00:00 | 0 | FixedUnits | h | 1 | · · · Rout | 968 | d | 2026-09-25T08:00:00 |  | True |
| 0 | 2026-10-09T17:00:00 | 0 | FixedUnits | h | 10 | · · · Approval | 967 | d | 2026-09-28T08:00:00 |  | True |
| 0 | 2026-11-02T17:00:00 | 0 | Normal | h | 16 | · · MVR | 983 | d | 2026-10-12T08:00:00 | True |  |
| 0 | 2026-10-16T17:00:00 | 0 | FixedUnits | h | 5 | · · · Draft | 982 | d | 2026-10-12T08:00:00 |  | True |
| 0 | 2026-10-19T17:00:00 | 0 | FixedUnits | h | 1 | · · · Rout | 981 | d | 2026-10-19T08:00:00 |  | True |
| 0 | 2026-11-02T17:00:00 | 0 | FixedUnits | h | 10 | · · · Approval | 958 | d | 2026-10-20T08:00:00 |  | True |
| 0 | 2026-06-24T17:00:00 | 0 | Normal | h | 26 | · · DV Protocol RTA | 866 | d | 2026-05-20T08:00:00 | True |  |
| 0 | 2026-06-02T17:00:00 | 0 | FixedUnits | h | 10 | · · · Real time aging | 865 | d | 2026-05-20T08:00:00 |  | True |

| percentDone | endDate | effort | schedulingMode | effortUnit | duration | name | id | durationUnit | startDate | rollup | milestone | leaf |
| --- | --- | --- | --- | --- | --- | --- | --- | --- | --- | --- | --- | --- |
| 0 | 2026-06-09T17:00:00 | 0 | FixedUnits | h | 5 | · · · Internal review | 864 | d | 2026-06-03T08:00:00 |  |  | True |
| 0 | 2026-06-10T17:00:00 | 0 | FixedUnits | h | 1 | · · · Rout | 863 | d | 2026-06-10T08:00:00 |  |  | True |
| 0 | 2026-06-24T17:00:00 | 0 | FixedUnits | h | 10 | · · · Approve | 862 | d | 2026-06-11T08:00:00 |  |  | True |
| 0 | 2026-07-01T17:00:00 | 0 | Normal | h | 21 | · · DV Protocol AA | 1011 | d | 2026-06-03T08:00:00 | True |  |  |
| 0 | 2026-06-09T17:00:00 | 0 | FixedUnits | h | 5 | · · · AA | 996 | d | 2026-06-03T08:00:00 |  |  | True |
| 0 | 2026-06-16T17:00:00 | 0 | FixedUnits | h | 5 | · · · Internal review | 1010 | d | 2026-06-10T08:00:00 |  |  | True |
| 0 | 2026-06-17T17:00:00 | 0 | FixedUnits | h | 1 | · · · Rout | 1009 | d | 2026-06-17T08:00:00 |  |  | True |
| 0 | 2026-07-01T17:00:00 | 0 | FixedUnits | h | 10 | · · · Approve | 1008 | d | 2026-06-18T08:00:00 |  |  | True |
| 0 | 2026-07-08T17:00:00 | 0 | Normal | h | 21 | · · DV Protocol 6061 | 1007 | d | 2026-06-10T08:00:00 | True |  |  |
| 0 | 2026-06-16T17:00:00 | 0 | FixedUnits | h | 5 | · · · 60601 | 995 | d | 2026-06-10T08:00:00 |  |  | True |
| 0 | 2026-06-23T17:00:00 | 0 | FixedUnits | h | 5 | · · · Internal review | 1016 | d | 2026-06-17T08:00:00 |  |  | True |
| 0 | 2026-06-24T17:00:00 | 0 | FixedUnits | h | 1 | · · · Rout | 1015 | d | 2026-06-24T08:00:00 |  |  | True |
| 0 | 2026-07-08T17:00:00 | 0 | FixedUnits | h | 10 | · · · Approve | 1014 | d | 2026-06-25T08:00:00 |  |  | True |
| 0 | 2026-07-15T17:00:00 | 0 | Normal | h | 21 | · · DV Protocol T0 | 1013 | d | 2026-06-17T08:00:00 | True |  |  |
| 0 | 2026-06-23T17:00:00 | 0 | FixedUnits | h | 5 | · · · T0 | 997 | d | 2026-06-17T08:00:00 |  |  | True |
| 0 | 2026-06-30T17:00:00 | 0 | FixedUnits | h | 5 | · · · Internal review | 1006 | d | 2026-06-24T08:00:00 |  |  | True |
| 0 | 2026-07-01T17:00:00 | 0 | FixedUnits | h | 1 | · · · Rout | 1005 | d | 2026-07-01T08:00:00 |  |  | True |
| 0 | 2026-07-15T17:00:00 | 0 | FixedUnits | h | 10 | · · · Approve | 1004 | d | 2026-07-02T08:00:00 |  |  | True |
| 0 | 2026-12-04T17:00:00 | 0 | Normal | h | 56 | · · Build DV units | 876 | d | 2026-09-18T08:00:00 | True |  |  |
| 0 | 2026-09-21T17:00:00 | 0 | FixedUnits | h | 2 | · · · NSMR Creation for DV builds | 984 | d | 2026-09-18T08:00:00 |  |  | True |
| 0 | 2026-10-30T17:00:00 | 0 | FixedUnits | h | 15 | · · · DV parts build in production | 875 | d | 2026-10-12T08:00:00 |  |  | True |
| 0 | 2026-11-27T17:00:00 | 0 | FixedUnits | h | 20 | · · · 2x ster & Shipping | 993 | d | 2026-11-02T08:00:00 |  |  | True |
| 0 | 2026-12-04T17:00:00 | 0 | FixedUnits | h | 5 | · · · Ship to MN | 998 | d | 2026-11-30T08:00:00 |  |  | True |
| 0 | 2026-12-04T17:00:00 | 0 | FixedUnits | h | 5 | · · · Ship for external testing | 1031 | d | 2026-11-30T08:00:00 |  |  | True |
| 0 | 2027-04-19T17:00:00 | 0 | Normal | h | 96 | · · DV execution AA | 1017 | d | 2026-12-07T08:00:00 | True |  |  |
| 0 | 2026-12-11T17:00:00 | 0 | FixedUnits | h | 5 | · · · Prep samples | 1018 | d | 2026-12-07T08:00:00 |  |  | True |
| 0 | 2027-03-05T17:00:00 | 0 | FixedUnits | h | 60 | · · · AA (3 months) | 1002 | d | 2026-12-14T08:00:00 |  |  | True |
| 0 | 2027-03-19T17:00:00 | 0 | FixedUnits | h | 10 | · · · AA testing | 1045 | d | 2027-03-08T08:00:00 |  |  | True |
| 0 | 2027-03-26T17:00:00 | 0 | FixedUnits | h | 5 | · · · Drat report | 1039 | d | 2027-03-22T08:00:00 |  |  | True |
| 0 | 2027-04-02T17:00:00 | 0 | FixedUnits | h | 5 | · · · Internal review | 1038 | d | 2027-03-29T08:00:00 |  |  | True |
| 0 | 2027-04-05T17:00:00 | 0 | FixedUnits | h | 1 | · · · Rout | 1037 | d | 2027-04-05T08:00:00 |  |  | True |
| 0 | 2027-04-19T17:00:00 | 0 | FixedUnits | h | 10 | · · · Approve | 1036 | d | 2027-04-06T08:00:00 |  |  | True |
| 0 | 2027-09-17T17:00:00 | 0 | Normal | h | 1188 | · · DV execution Real time | 1052 | d | 2023-03-01T08:00:00 | True |  |  |
| 0 | 2027-09-17T17:00:00 | 0 | FixedUnits | h | 200 | · · · Real time (24 months) | 990 | d | 2026-12-14T08:00:00 |  |  | True |
| 0 | 2023-03-03T17:00:00 | 0 | FixedUnits | h | 3 | · · · Ship pats | 999 | d | 2023-03-01T08:00:00 |  |  | True |
| 0 | 2023-03-17T17:00:00 | 0 | FixedUnits | h | 10 | · · · DV testing | 1000 | d | 2023-03-06T08:00:00 |  |  | True |
| 0 | 2027-02-01T17:00:00 | 0 | Normal | h | 41 | · · DV execution External | 1034 | d | 2026-12-07T08:00:00 | True |  |  |
| 0 | 2026-12-18T17:00:00 | 0 | FixedUnits | h | 10 | · · · 60601 External | 989 | d | 2026-12-07T08:00:00 |  |  | True |
| 0 | 2027-01-01T17:00:00 | 0 | FixedUnits | h | 10 | · · · Testing | 1033 | d | 2026-12-21T08:00:00 |  |  | True |
| 0 | 2027-01-08T17:00:00 | 0 | FixedUnits | h | 5 | · · · Drat report | 1051 | d | 2027-01-04T08:00:00 |  |  | True |
| 0 | 2027-01-15T17:00:00 | 0 | FixedUnits | h | 5 | · · · Internal review | 1050 | d | 2027-01-11T08:00:00 |  |  | True |
| 0 | 2027-01-18T17:00:00 | 0 | FixedUnits | h | 1 | · · · Rout | 1049 | d | 2027-01-18T08:00:00 |  |  | True |
| 0 | 2027-02-01T17:00:00 | 0 | FixedUnits | h | 10 | · · · Approve | 1048 | d | 2027-01-19T08:00:00 |  |  | True |
| 0 | 2027-02-15T17:00:00 | 0 | Normal | h | 41 | · · DV T0 report | 1032 | d | 2026-12-21T08:00:00 | True |  |  |
| 0 | 2027-01-01T17:00:00 | 0 | FixedUnits | h | 10 | · · · T0 | 992 | d | 2026-12-21T08:00:00 |  |  | True |
| 0 | 2027-01-15T17:00:00 | 0 | FixedUnits | h | 10 | · · · Testing | 1053 | d | 2027-01-04T08:00:00 |  |  | True |
| 0 | 2027-01-22T17:00:00 | 0 | FixedUnits | h | 5 | · · · Drat report | 1001 | d | 2027-01-18T08:00:00 |  |  | True |
| 0 | 2027-01-29T17:00:00 | 0 | FixedUnits | h | 5 | · · · Internal review | 874 | d | 2027-01-25T08:00:00 |  |  | True |
| 0 | 2027-02-01T17:00:00 | 0 | FixedUnits | h | 1 | · · · Rout | 861 | d | 2027-02-01T08:00:00 |  |  | True |
| 0 | 2027-02-15T17:00:00 | 0 | FixedUnits | h | 10 | · · · Approve | 855 | d | 2027-02-02T08:00:00 |  |  | True |
| 0 | 2023-05-16T17:00:00 | 0 | Normal | h | 55 | · · <New Task> | 1035 | d | 2023-03-01T08:00:00 | True |  |  |
| 0 | 2023-03-14T17:00:00 | 0 | FixedUnits | h | 10 | · · · Ship FG to MG for DV testing | 1027 | d | 2023-03-01T08:00:00 |  |  | True |
| 0 | 2023-03-28T17:00:00 | 0 | FixedUnits | h | 10 | · · · Ship external lab for 60601 testing | 1026 | d | 2023-03-15T08:00:00 |  |  | True |
| 0 | 2023-04-25T17:00:00 | 0 | FixedUnits | h | 20 | · · · Conduct testing | 1025 | d | 2023-03-29T08:00:00 |  |  | True |
| 0 | 2023-05-16T17:00:00 | 0 | FixedUnits | h | 15 | · · · Write/release test report | 1024 | d | 2023-04-26T08:00:00 |  |  | True |
| 0 | 2027-11-15T17:00:00 | 0 | Normal | h | 150 | · · DEKRA Submission | 885 | d | 2027-04-20T08:00:00 | True |  |  |
| 0 | 2027-05-03T17:00:00 | 0 | FixedUnits | h | 10 | · · · Draft submission | 884 | d | 2027-04-20T08:00:00 |  |  | True |
| 0 | 2027-05-17T17:00:00 | 0 | FixedUnits | h | 10 | · · · SME Review | 883 | d | 2027-05-04T08:00:00 |  |  | True |
| 0 | 2027-05-31T17:00:00 | 0 | FixedUnits | h | 10 | · · · Managers review | 882 | d | 2027-05-18T08:00:00 |  |  | True |
| 0 | 2027-10-04T17:00:00 | 0 | FixedUnits | h | 90 | · · · FDA 90 day Review | 880 | d | 2027-06-01T08:00:00 |  |  | True |
| 0 | 2027-10-18T17:00:00 | 0 | FixedUnits | h | 100 | · · · DEKRA Review Min 4 nonths | 881 | d | 2027-06-01T08:00:00 |  |  | True |
| 0 | 2027-11-15T17:00:00 | 0 | FixedUnits | h | 120 | · · · DEKRA Review Max 6 months | 879 | d | 2027-06-01T08:00:00 |  |  | True |
| 0 | 2023-03-01T08:00:00 | 0 | FixedUnits | h | 0 | · · Qualification Complete | 510 | d | 2023-03-01T08:00:00 |  | True | True |
| 0 | 2023-03-20T17:00:00 | 224 | Normal | h | 14 | · · RBIA | 304 | d | 2023-03-01T08:00:00 | True |  |  |
| 0 | 2023-03-07T17:00:00 | 40 | FixedUnits | h | 5 | · · · Draft | 303 | d | 2023-03-01T08:00:00 |  |  | True |
| 0 | 2023-03-10T17:00:00 | 24 | FixedUnits | h | 3 | · · · Review | 302 | d | 2023-03-08T08:00:00 |  |  | True |
| 0 | 2023-03-13T17:00:00 | 8 | FixedUnits | h | 1 | · · · Rout | 301 | d | 2023-03-13T08:00:00 |  |  | True |
| 0 | 2023-03-20T17:00:00 | 40 | FixedUnits | h | 5 | · · · Approve | 300 | d | 2023-03-14T08:00:00 |  |  | True |
| 0 | 2023-03-29T17:00:00 | 336 | Normal | h | 21 | · · SAP QM | 299 | d | 2023-03-01T08:00:00 | True |  |  |
| 0 | 2023-03-07T17:00:00 | 40 | FixedUnits | h | 5 | · · · Update | 298 | d | 2023-03-01T08:00:00 |  |  | True |

| percentDone | endDate | effort | schedulingMode | effortUnit | duration | name | id | durationUnit | startDate | rollup | milestone | leaf |
| --- | --- | --- | --- | --- | --- | --- | --- | --- | --- | --- | --- | --- |
| 0 | 2023-03-08T17:00:00 | 8 | FixedUnits | h | 1 | · · · Rout | 297 | d | 2023-03-08T08:00:00 |  |  | True |
| 0 | 2023-03-29T17:00:00 | 120 | FixedUnits | h | 15 | · · · approve | 296 | d | 2023-03-09T08:00:00 |  |  | True |
| 0 | 2023-03-01T17:00:00 | 0 | Normal | h | 1 | · · PFMEA | 988 | d | 2023-03-01T08:00:00 | True |  |  |
| 0 | 2023-03-01T17:00:00 | 0 | FixedUnits | h | 1 | · · · <New Task> | 987 | d | 2023-03-01T08:00:00 |  |  | True |
| 0 | 2023-03-01T17:00:00 | 0 | FixedUnits | h | 1 | · · · <New Task> | 986 | d | 2023-03-01T08:00:00 |  |  | True |
| 0 | 2023-03-01T17:00:00 | 0 | FixedUnits | h | 1 | · · · <New Task> | 985 | d | 2023-03-01T08:00:00 |  |  | True |
| 0 | 2023-04-05T17:00:00 | 208 | Normal | h | 26 | · · DFMEA | 316 | d | 2023-03-01T08:00:00 | True |  |  |
| 0 | 2023-03-07T17:00:00 | 40 | FixedUnits | h | 5 | · · · Update to remove pad print referance | 315 | d | 2023-03-01T08:00:00 |  |  | True |
| 0 | 2023-03-14T17:00:00 | 40 | FixedUnits | h | 5 | · · · Review Draft | 314 | d | 2023-03-08T08:00:00 |  |  | True |
| 0 | 2023-03-15T17:00:00 | 8 | FixedUnits | h | 1 | · · · Rout on CN | 313 | d | 2023-03-15T08:00:00 |  |  | True |
| 0 | 2023-04-05T17:00:00 | 120 | FixedUnits | h | 15 | · · · Approve at IRR | 312 | d | 2023-03-16T08:00:00 |  |  | True |
| 0 | 2023-04-25T17:00:00 | 0 | Normal | h | 40 | · · eCMA | 323 | d | 2023-03-01T08:00:00 | True |  |  |
| 0 | 2023-04-25T17:00:00 | 0 | FixedUnits | h | 40 | · · · Update to remore pad print & add new P/N's | 322 | d | 2023-03-01T08:00:00 |  |  | True |
| 0 | 2027-11-15T17:00:00 | 0 | FixedDuration | h | 0 | · · Execution phase COMPLETE | 81 | d | 2027-11-15T17:00:00 |  | True | True |
| 0 | 2027-12-13T17:00:00 | 0 | Normal | h | 20 | · Close out activities | 83 | d | 2027-11-16T08:00:00 | True |  |  |
| 0 | 2027-12-07T17:00:00 | 0 | Normal | h | 16 | · · Print, Part & Spec map roll to Alpha | 902 | d | 2027-11-16T08:00:00 | True |  |  |
| 0 | 2027-11-22T17:00:00 | 0 | FixedUnits | h | 5 | · · · Print | 919 | d | 2027-11-16T08:00:00 |  |  | True |
| 0 | 2027-11-22T17:00:00 | 0 | FixedUnits | h | 5 | · · · Part number | 918 | d | 2027-11-16T08:00:00 |  |  | True |
| 0 | 2027-11-22T17:00:00 | 0 | FixedUnits | h | 5 | · · · Spec map | 903 | d | 2027-11-16T08:00:00 |  |  | True |
| 0 | 2027-11-23T17:00:00 | 0 | FixedUnits | h | 1 | · · · Rout on CN | 904 | d | 2027-11-23T08:00:00 |  |  | True |
| 0 | 2027-12-07T17:00:00 | 0 | FixedUnits | h | 10 | · · · Approve at IRR | 905 | d | 2027-11-24T08:00:00 |  |  | True |
| 0 | 2027-12-07T17:00:00 | 0 | Normal | h | 16 | · · DMA report | 906 | d | 2027-11-16T08:00:00 | True |  |  |
| 0 | 2027-11-22T17:00:00 | 0 | FixedUnits | h | 5 | · · · Draft | 907 | d | 2027-11-16T08:00:00 |  |  | True |
| 0 | 2027-11-23T17:00:00 | 0 | FixedUnits | h | 1 | · · · Rout on CN | 908 | d | 2027-11-23T08:00:00 |  |  | True |
| 0 | 2027-12-07T17:00:00 | 0 | FixedUnits | h | 10 | · · · Approve at IRR | 909 | d | 2027-11-24T08:00:00 |  |  | True |
| 0 | 2027-12-07T17:00:00 | 0 | Normal | h | 16 | · · DFMEA | 910 | d | 2027-11-16T08:00:00 | True |  |  |
| 0 | 2027-11-22T17:00:00 | 0 | FixedUnits | h | 5 | · · · Draft | 911 | d | 2027-11-16T08:00:00 |  |  | True |
| 0 | 2027-11-23T17:00:00 | 0 | FixedUnits | h | 1 | · · · Rout on CN | 912 | d | 2027-11-23T08:00:00 |  |  | True |
| 0 | 2027-12-07T17:00:00 | 0 | FixedUnits | h | 10 | · · · Approve at IRR | 913 | d | 2027-11-24T08:00:00 |  |  | True |
| 0 | 2027-12-07T17:00:00 | 0 | Normal | h | 16 | · · EDO | 914 | d | 2027-11-16T08:00:00 | True |  |  |
| 0 | 2027-11-22T17:00:00 | 0 | FixedUnits | h | 5 | · · · Draft | 915 | d | 2027-11-16T08:00:00 |  |  | True |
| 0 | 2027-11-23T17:00:00 | 0 | FixedUnits | h | 1 | · · · Rout on CN | 916 | d | 2027-11-23T08:00:00 |  |  | True |
| 0 | 2027-12-07T17:00:00 | 0 | FixedUnits | h | 10 | · · · Approve at IRR | 917 | d | 2027-11-24T08:00:00 |  |  | True |
| 0 | 2027-12-07T17:00:00 | 0 | Normal | h | 16 | · · X | 516 | d | 2027-11-16T08:00:00 | True |  |  |
| 0 | 2027-11-22T17:00:00 | 0 | FixedUnits | h | 5 | · · · Update to change Pro & Pro GI referances | 515 | d | 2027-11-16T08:00:00 |  |  | True |
| 0 | 2027-11-23T17:00:00 | 0 | FixedUnits | h | 1 | · · · Rout on CN | 513 | d | 2027-11-23T08:00:00 |  |  | True |
| 0 | 2027-12-07T17:00:00 | 0 | FixedUnits | h | 10 | · · · Approve at IRR | 512 | d | 2027-11-24T08:00:00 |  |  | True |
| 0 | 2027-12-07T17:00:00 | 0 | Normal | h | 16 | · · X | 388 | d | 2027-11-16T08:00:00 | True |  |  |
| 0 | 2027-11-22T17:00:00 | 0 | FixedUnits | h | 5 | · · · Update | 424 | d | 2027-11-16T08:00:00 |  |  | True |
| 0 | 2027-11-23T17:00:00 | 0 | FixedUnits | h | 1 | · · · Rout on CN | 422 | d | 2027-11-23T08:00:00 |  |  | True |
| 0 | 2027-12-07T17:00:00 | 0 | FixedUnits | h | 10 | · · · Approve at IRR | 387 | d | 2027-11-24T08:00:00 |  |  | True |
| 0 | 2027-12-07T17:00:00 | 0 | Normal | h | 16 | · · X | 386 | d | 2027-11-16T08:00:00 | True |  |  |
| 0 | 2027-11-22T17:00:00 | 0 | FixedUnits | h | 5 | · · · Update | 427 | d | 2027-11-16T08:00:00 |  |  | True |
| 0 | 2027-11-23T17:00:00 | 0 | FixedUnits | h | 1 | · · · Rout on CN | 425 | d | 2027-11-23T08:00:00 |  |  | True |
| 0 | 2027-12-07T17:00:00 | 0 | FixedUnits | h | 10 | · · · Approve at IRR | 392 | d | 2027-11-24T08:00:00 |  |  | True |
| 0 | 2027-12-07T17:00:00 | 0 | Normal | h | 16 | · · X | 391 | d | 2027-11-16T08:00:00 | True |  |  |
| 0 | 2027-11-22T17:00:00 | 0 | FixedUnits | h | 5 | · · · Update | 430 | d | 2027-11-16T08:00:00 |  |  | True |
| 0 | 2027-11-23T17:00:00 | 0 | FixedUnits | h | 1 | · · · Rout on CN | 428 | d | 2027-11-23T08:00:00 |  |  | True |
| 0 | 2027-12-07T17:00:00 | 0 | FixedUnits | h | 10 | · · · Approve at IRR | 390 | d | 2027-11-24T08:00:00 |  |  | True |
| 0 | 2027-12-07T17:00:00 | 0 | Normal | h | 16 | · · PFMEA | 309 | d | 2027-11-16T08:00:00 | True |  |  |
| 0 | 2027-11-22T17:00:00 | 0 | FixedUnits | h | 5 | · · · Update to remove pad print | 308 | d | 2027-11-16T08:00:00 |  |  | True |
| 0 | 2027-11-23T17:00:00 | 0 | FixedUnits | h | 1 | · · · Rout on CN | 306 | d | 2027-11-23T08:00:00 |  |  | True |
| 0 | 2027-12-07T17:00:00 | 0 | FixedUnits | h | 10 | · · · Approve at IRR | 305 | d | 2027-11-24T08:00:00 |  |  | True |
| 0 | 2027-12-07T17:00:00 | 0 | Normal | h | 16 | · · SGOI Updates Pro & Pro GI | 517 | d | 2027-11-16T08:00:00 | True |  |  |
| 0 | 2027-11-22T17:00:00 | 0 | FixedUnits | h | 5 | · · · Update 90867945 to update images in step 5 | 280 | d | 2027-11-16T08:00:00 |  |  | True |
| 0 | 2027-11-23T17:00:00 | 0 | FixedUnits | h | 1 | · · · Rout on CN | 278 | d | 2027-11-23T08:00:00 |  |  | True |
| 0 | 2027-11-30T17:00:00 | 0 | FixedUnits | h | 5 | · · · Approve at IRR | 239 | d | 2027-11-24T08:00:00 |  |  | True |
| 0 | 2027-12-07T17:00:00 | 0 | FixedUnits | h | 5 | · · · Train PB's to the SGOI | 555 | d | 2027-12-01T08:00:00 |  |  | True |
| 0 | 2027-12-08T17:00:00 | 0 | Normal | h | 11 | · · SCIA - Alpha A | 364 | d | 2027-11-24T08:00:00 | True |  |  |
| 0 | 2027-11-30T17:00:00 | 0 | FixedUnits | h | 5 | · · · Draft SCIA | 363 | d | 2027-11-24T08:00:00 |  |  | True |
| 0 | 2027-12-01T17:00:00 | 0 | FixedUnits | h | 1 | · · · Rount on fast track CN (Alpha) | 361 | d | 2027-12-01T08:00:00 |  |  | True |
| 0 | 2027-12-08T17:00:00 | 0 | FixedUnits | h | 5 | · · · Approved | 360 | d | 2027-12-02T08:00:00 |  |  | True |
| 0 | 2027-12-08T17:00:00 | 0 | Normal | h | 11 | · · DCA Alpha A | 359 | d | 2027-11-24T08:00:00 | True |  |  |
| 0 | 2027-11-30T17:00:00 | 0 | FixedUnits | h | 5 | · · · Draft the DCA | 459 | d | 2027-11-24T08:00:00 |  |  | True |
| 0 | 2027-12-01T17:00:00 | 0 | FixedUnits | h | 1 | · · · Rout DCA | 356 | d | 2027-12-01T08:00:00 |  |  | True |
| 0 | 2027-12-08T17:00:00 | 0 | FixedUnits | h | 5 | · · · Approved DCA rev B | 355 | d | 2027-12-02T08:00:00 |  |  | True |
| 0 | 2027-12-08T17:00:00 | 0 | Normal | h | 11 | · · PCA A | 354 | d | 2027-11-24T08:00:00 | True |  |  |
| 0 | 2027-11-30T17:00:00 | 0 | FixedUnits | h | 5 | · · · Update | 353 | d | 2027-11-24T08:00:00 |  |  | True |
| 0 | 2027-12-01T17:00:00 | 0 | FixedUnits | h | 1 | · · · Rout | 352 | d | 2027-12-01T08:00:00 |  |  | True |
| 0 | 2027-12-08T17:00:00 | 0 | FixedUnits | h | 5 | · · · Approved PCA | 351 | d | 2027-12-02T08:00:00 |  |  | True |

| percentDone | endDate | effort | schedulingMode | effortUnit | duration | name | id | durationUnit | startDate | rollup | milestone | leaf | constraintType | constraintDate |
| --- | --- | --- | --- | --- | --- | --- | --- | --- | --- | --- | --- | --- | --- | --- |
| 0 | 2027-12-08T17:00:00 | 0 | Normal | h | 11 | · · BOM & Router update | 559 | d | 2027-11-24T08:00:00 | True |  |  |  |  |
| 0 | 2027-11-30T17:00:00 | 0 | FixedUnits | h | 5 | · · · Update | 558 | d | 2027-11-24T08:00:00 |  |  | True |  |  |
| 0 | 2027-12-01T17:00:00 | 0 | FixedUnits | h | 1 | · · · Rout | 557 | d | 2027-12-01T08:00:00 |  |  | True |  |  |
| 0 | 2027-12-08T17:00:00 | 0 | FixedUnits | h | 5 | · · · Approve | 556 | d | 2027-12-02T08:00:00 |  |  | True |  |  |
| 0 | 2027-12-08T17:00:00 | 0 | Normal | h | 0 | · · IRR Release | 659 | d | 2027-12-08T17:00:00 | True | True |  |  |  |
| 0 | 2027-12-08T17:00:00 | 0 | FixedUnits | h | 0 | · · · All documents at IRR | 658 | d | 2027-12-08T17:00:00 |  | True | True |  |  |
| 0 | 2027-12-07T17:00:00 | 0 | Normal | h | 5 | · · MSE Activities | 722 | d | 2027-12-01T08:00:00 | True |  |  |  |  |
| 0 | 2027-12-03T17:00:00 | 0 | FixedUnits | h | 3 | · · · Identify MES resource on hand | 723 | d | 2027-12-01T08:00:00 |  |  | True |  |  |
| 0 | 2027-12-07T17:00:00 | 0 | FixedUnits | h | 2 | · · · Log MES request | 724 | d | 2027-12-06T08:00:00 |  |  | True |  |  |
| 0 | 2027-12-07T17:00:00 | 0 | FixedUnits | h | 2 | · · · Add new UPN to Qlikview & Power BI | 725 | d | 2027-12-06T08:00:00 |  |  | True |  |  |
| 0 | 2027-12-07T17:00:00 | 0 | FixedUnits | h | 2 | · · · SAP resource available to support trouble shooting | 740 | d | 2027-12-06T08:00:00 |  |  | True |  |  |
| 0 | 2027-12-01T17:00:00 | 0 | Normal | h | 12 | · · Warehouse cut over tasks - Prepare | 644 | d | 2027-11-16T08:00:00 | True |  |  |  |  |
| 0 | 2027-11-18T17:00:00 | 0 | FixedUnits | h | 3 | · · · Request PRO IFU shipment from Colorman | 650 | d | 2027-11-16T08:00:00 |  |  | True | startnoearlierthan | 2024-01-24T08:00:00 |
| 0 | 2027-11-25T17:00:00 | 0 | FixedUnits | h | 5 | · · · Pre inspection of incomming COC IFU's | 682 | d | 2027-11-19T08:00:00 |  |  | True |  |  |
| 0 | 2027-11-29T17:00:00 | 0 | FixedUnits | h | 2 | · · · Pre inspection of incomming COC Wires | 681 | d | 2027-11-26T08:00:00 |  |  | True |  |  |
| 0 | 2027-11-29T17:00:00 | 0 | FixedUnits | h | 0 | · · · Shells received into FAI | 690 | d | 2027-11-29T17:00:00 |  | True | True |  |  |
| 0 | 2027-12-01T17:00:00 | 0 | FixedUnits | h | 2 | · · · Set up additional kanban for new wires in warehouse | 643 | d | 2027-11-30T08:00:00 |  |  | True |  |  |
| 0 | 2027-12-07T17:00:00 | 0 | Normal | h | 6 | · · Line cut over tasks - Prepare | 633 | d | 2027-11-30T08:00:00 | True |  |  |  |  |
| 0 | 2027-11-30T17:00:00 | 0 | FixedUnits | h | 1 | · · · Space for Kanbans in production for -03 & -04 | 636 | d | 2027-11-30T08:00:00 |  |  | True |  |  |
| 0 | 2027-12-01T17:00:00 | 0 | FixedUnits | h | 1 | · · · Scope Lots on Hold | 648 | d | 2027-12-01T08:00:00 |  |  | True |  |  |
| 0 | 2027-12-02T17:00:00 | 0 | FixedUnits | h | 1 | · · · Communicate changes at LST/MGR meeting | 734 | d | 2027-12-02T08:00:00 |  |  | True |  |  |
| 0 | 2027-12-02T17:00:00 | 0 | FixedUnits | h | 1 | · · · Stop issuing -01 & -02 to Pro & Pro GI Friday eve | 649 | d | 2027-12-02T08:00:00 |  |  | True |  |  |
| 0 | 2027-12-02T17:00:00 | 0 | FixedUnits | h | 0 | · · · Ensure no Pro & Pro GI lots are issues - Weekend shift | 726 | d | 2027-12-02T17:00:00 |  | True | True |  |  |
| 0 | 2027-12-03T17:00:00 | 0 | FixedUnits | h | 1 | · · · Ensure no Pro & Pro GI lots are issued to the line | 689 | d | 2027-12-03T08:00:00 |  |  | True |  |  |
| 0 | 2027-12-07T17:00:00 | 0 | FixedUnits | h | 2 | · · · Purge Line for Implementation | 635 | d | 2027-12-06T08:00:00 |  |  | True |  |  |
| 0 | 2027-12-13T17:00:00 | 0 | Normal | h | 3 | · · Day of cut over | 696 | d | 2027-12-09T08:00:00 | True |  |  |  |  |
| 0 | 2027-12-09T17:00:00 | 0 | FixedUnits | h | 1 | · · · 8:50 Communicate changes at LST/MGR meeting | 739 | d | 2027-12-09T08:00:00 |  |  | True |  |  |
| 0 | 2027-12-09T17:00:00 | 0 | FixedUnits | h | 1 | · · · 10:00 Clear order release screen on MES | 741 | d | 2027-12-09T08:00:00 |  |  | True |  |  |
| 0 | 2027-12-09T17:00:00 | 0 | FixedUnits | h | 1 | · · · 11:00 Confirm line has been purged | 727 | d | 2027-12-09T08:00:00 |  |  | True |  |  |
| 0 | 2027-12-09T17:00:00 | 0 | FixedUnits | h | 1 | · · · 12:00 Confirm wires have arrived on site & communicate | 742 | d | 2027-12-09T08:00:00 |  |  | True |  |  |
| 0 | 2027-12-09T17:00:00 | 0 | FixedUnits | h | 0 | · · · 13:00 IRR Party | 657 | d | 2027-12-09T17:00:00 |  | True | True |  |  |
| 0 | 2027-12-09T17:00:00 | 0 | FixedUnits | h | 0 | · · · 14:00 Rev justification form -04 (rev 01 to rEv 02 at receiving) | 735 | d | 2027-12-09T17:00:00 |  | True | True |  |  |
| 0 | 2027-12-09T17:00:00 | 0 | FixedUnits | h | 0 | · · · 15:00 Set Effectivity | 743 | d | 2027-12-09T17:00:00 |  | True | True |  |  |
| 0 | 2027-12-10T17:00:00 | 0 | FixedUnits | h | 1 | · · · rev justification to alpha | 744 | d | 2027-12-10T08:00:00 |  |  | True |  |  |
| 0 | 2027-12-10T17:00:00 | 0 | FixedUnits | h | 0 | · · · 15:00 SAP Submittal approval | 701 | d | 2027-12-10T17:00:00 |  | True | True |  |  |
| 0 | 2027-12-10T17:00:00 | 0 | FixedUnits | h | 0 | · · · 15:00 Ensure inspection for IFU's are active | 731 | d | 2027-12-10T17:00:00 |  | True | True |  |  |
| 0 | 2027-12-10T17:00:00 | 0 | FixedUnits | h | 0 | · · · Confirm pricing is set up correctly | 713 | d | 2027-12-10T17:00:00 |  | True | True |  |  |
| 0 | 2027-12-10T17:00:00 | 0 | FixedUnits | h | 0 | · · · 15:30 Part price set up on Alpha part | 702 | d | 2027-12-10T17:00:00 |  | True | True |  |  |
| 0 | 2027-12-10T17:00:00 | 0 | FixedUnits | h | 0 | · · · Set MMPP status from 20 to 00 | 703 | d | 2027-12-10T17:00:00 |  | True | True |  |  |
| 0 | 2027-12-10T17:00:00 | 0 | FixedUnits | h | 0 | · · · Part price set up on Alpha part | 704 | d | 2027-12-10T17:00:00 |  | True | True |  |  |
| 0 | 2027-12-10T17:00:00 | 0 | FixedUnits | h | 0 | · · · Check pick list can call part numbers | 732 | d | 2027-12-10T17:00:00 |  | True | True |  |  |
| 0 | 2027-12-13T17:00:00 | 0 | FixedUnits | h | 1 | · · · labeling - relabelling to Rev A | 738 | d | 2027-12-13T08:00:00 |  |  | True |  |  |
| 0 | 2027-12-13T17:00:00 | 0 | FixedUnits | h | 0 | · · · IQC Inspection (CoC) check | 705 | d | 2027-12-13T17:00:00 |  | True | True |  |  |
| 0 | 2027-12-13T17:00:00 | 0 | FixedUnits | h | 0 | · · · Move from FAI to PVSR and notify Line QE | 706 | d | 2027-12-13T17:00:00 |  | True | True |  |  |
| 0 | 2027-12-13T17:00:00 | 0 | FixedUnits | h | 0 | · · · Move from PVSR to 8811 unrestricted | 707 | d | 2027-12-13T17:00:00 |  | True | True |  |  |
| 0 | 2027-12-13T17:00:00 | 0 | FixedUnits | h | 0 | · · · Inner labeling | 733 | d | 2027-12-13T17:00:00 |  | True | True |  |  |
| 0 | 2027-12-13T17:00:00 | 0 | FixedUnits | h | 0 | · · · Move from 8811 to Cleanroom | 708 | d | 2027-12-13T17:00:00 |  | True | True |  |  |
| 0 | 2027-12-13T17:00:00 | 0 | FixedUnits | h | 0 | · · · Parts Available for Manufcturing Line | 709 | d | 2027-12-13T17:00:00 |  | True | True |  |  |
| 0 | 2027-12-13T17:00:00 | 0 | FixedUnits | h | 0 | · · · ZRD3 to confirm new P/N Can be pulled | 685 | d | 2027-12-13T17:00:00 |  | True | True |  |  |
| 0 | 2027-12-13T17:00:00 | 0 | FixedUnits | h | 0 | · · · Implement Parts | 710 | d | 2027-12-13T17:00:00 |  | True | True |  |  |
| 0 | 2027-12-13T17:00:00 | 0 | FixedUnits | h | 0 | · · · Orders requested and Released | 711 | d | 2027-12-13T17:00:00 |  | True | True |  |  |
| 0 | 2027-12-13T17:00:00 | 0 | FixedUnits | h | 0 | · Project COMPLETE | 224 | d | 2027-12-13T17:00:00 |  | True | True |  |  |

Links (fromEvent, lag, id, lagUnit, type, toEvent):
- 451 0 1 d 2 800
- 450 0 2 d 2 800
- 449 0 3 d 2 800
- 800 0 4 d 2 799
- 799 0 5 d 2 798
- 798 0 6 d 2 920
- 920 0 7 d 2 797
- 920 0 8 d 2 821
- 821 0 9 d 2 820
- 820 0 10 d 2 819
- 819 0 11 d 2 818
- 818 6 12 d 2 815
- 815 0 13 d 2 814
- 814 0 14 d 2 813
- 813 0 15 d 2 812
- 818 16 16 d 2 926
- 818 6 17 d 2 810
- 810 0 18 d 2 809
- 926 0 19 d 2 809
- 809 0 20 d 2 808
- 808 0 21 d 2 807
- 818 6 22 d 2 805
- 805 0 23 d 2 887
- 887 0 24 d 2 886
- 886 0 25 d 2 804
- 815 0 26 d 2 892
- 810 0 27 d 2 892
- 805 0 28 d 2 892
- 815 0 29 d 2 891
- 810 0 30 d 2 891
- 805 0 31 d 2 891
- 807 0 32 d 2 923
- 812 0 33 d 2 888
- 807 0 34 d 2 888
- 886 0 35 d 2 888
- 892 0 36 d 2 888
- 891 0 37 d 2 888
- 818 6 38 d 2 930
- 930 0 39 d 2 929
- 929 0 40 d 2 928
- 818 6 41 d 2 842
- 842 0 42 d 2 850
- 928 0 43 d 2 850
- 850 0 44 d 2 841
- 841 0 45 d 2 840
- 818 6 46 d 2 851
- 851 0 47 d 2 848
- 928 0 48 d 2 848
- 848 0 49 d 2 847
- 847 0 50 d 2 846
- 818 6 51 d 2 873
- 873 0 52 d 2 849
- 846 0 53 d 2 849
- 849 0 54 d 2 852
- 852 0 55 d 2 946
- 946 0 56 d 2 844
- 844 0 57 d 2 838
- 928 0 58 d 2 941
- 928 0 59 d 2 943
- 943 0 60 d 2 940
- 940 0 61 d 2 939
- 940 0 62 d 2 937
- 937 0 63 d 2 945
- 818 6 64 d 2 871
- 871 0 65 d 2 870
- 870 0 66 d 2 869
- 869 0 67 d 2 868
- 868 0 68 d 2 867
- 867 0 69 d 2 895
- 895 0 70 d 2 894
- 838 0 71 d 2 833
- 869 0 72 d 2 833
- 833 0 73 d 2 832
- 867 0 74 d 2 832
- 894 0 75 d 2 832
- 832 0 76 d 2 831
- 833 0 77 d 2 828
- 828 0 78 d 2 827
- 831 0 79 d 2 827
- 945 0 80 d 2 827
- 827 0 81 d 2 826
- 827 0 82 d 2 979
- 840 0 83 d 2 872
- 869 0 84 d 2 854
- 872 0 85 d 2 854
- 854 0 86 d 2 853
- 853 0 87 d 2 824
- 824 0 88 d 2 823
- 823 0 89 d 2 859
- 826 0 90 d 2 859
- 859 0 91 d 2 858
- 858 0 92 d 2 857
- 857 0 93 d 2 856
- 823 0 94 d 2 973
- 973 0 95 d 2 965
- 965 0 96 d 2 964
- 964 0 97 d 2 963
- 979 0 98 d 2 977
- 977 0 99 d 2 975
- 975 0 100 d 2 974
- 974 0 101 d 2 972
- 972 0 102 d 2 970
- 970 0 103 d 2 980
- 980 0 104 d 2 969
- 969 0 105 d 2 968
- 968 0 106 d 2 967
- 967 0 107 d 2 982
- 982 0 108 d 2 981
- 981 0 109 d 2 958
- 823 0 110 d 2 865
- 865 0 111 d 2 864
- 864 0 112 d 2 863
- 863 0 113 d 2 862
- 865 0 114 d 2 996
- 996 0 115 d 2 1010
- 1010 0 116 d 2 1009
- 1009 0 117 d 2 1008
- 996 0 118 d 2 995
- 995 0 119 d 2 1016
- 1016 0 120 d 2 1015
- 1015 0 121 d 2 1014
- 995 0 122 d 2 997
- 997 0 123 d 2 1006
- 1006 0 124 d 2 1005
- 1005 0 125 d 2 1004
- 980 0 126 d 2 984
- 856 0 127 d 2 875
- 984 0 128 d 2 875
- 967 0 129 d 2 875
- 875 0 130 d 2 993
- 993 0 131 d 2 998
- 993 0 132 d 2 1031
- 998 0 133 d 2 1018
- 1018 0 134 d 2 1002
- 1002 0 135 d 2 1045
- 1045 0 136 d 2 1039
- 1039 0 137 d 2 1038
- 1038 0 138 d 2 1037
- 1037 0 139 d 2 1036
- 1018 0 140 d 2 990
- 999 0 141 d 2 1000
- 1031 0 142 d 2 989
- 989 0 143 d 2 1033
- 1033 0 144 d 2 1051
- 1051 0 145 d 2 1050
- 1050 0 146 d 2 1049
- 1049 0 147 d 2 1048
- 1018 5 148 d 2 992
- 992 0 149 d 2 1053
- 1053 0 150 d 2 1001
- 1001 0 151 d 2 874
- 874 0 152 d 2 861
- 861 0 153 d 2 855
- 1027 0 154 d 2 1026
- 1026 0 155 d 2 1025
- 1025 0 156 d 2 1024
- 1036 0 157 d 2 884
- 1048 0 158 d 2 884
- 855 0 159 d 2 884
- 884 0 160 d 2 883
- 883 0 161 d 2 882
- 882 0 162 d 2 880
- 882 0 163 d 2 881
- 882 0 164 d 2 879
- 303 0 165 d 2 302
- 302 0 166 d 2 301
- 301 0 167 d 2 300
- 298 0 168 d 2 297
- 297 0 169 d 2 296
- 315 0 170 d 2 314
- 314 0 171 d 2 313
- 313 0 172 d 2 312
- 510 0 173 d 2 322
- 880 0 174 d 2 81
- 881 0 175 d 2 81
- 879 0 176 d 2 81
- 81 0 177 d 2 919
- 81 0 178 d 2 918
- 81 0 179 d 2 903
- 903 0 180 d 2 904
- 919 0 181 d 2 904
- 918 0 182 d 2 904
- 904 0 183 d 2 905
- 81 0 184 d 2 907
- 907 0 185 d 2 908
- 908 0 186 d 2 909
- 81 0 187 d 2 911
- 911 0 188 d 2 912
- 912 0 189 d 2 913
- 81 0 190 d 2 915
- 915 0 191 d 2 916
- 916 0 192 d 2 917
- 81 0 193 d 2 515
- 515 0 194 d 2 513
- 513 0 195 d 2 512
- 81 0 196 d 2 424
- 424 0 197 d 2 422
- 422 0 198 d 2 387
- 81 0 199 d 2 427
- 427 0 200 d 2 425
- 425 0 201 d 2 392
- 81 0 202 d 2 430
- 430 0 203 d 2 428
- 428 0 204 d 2 390
- 81 0 205 d 2 308
- 308 0 206 d 2 306
- 306 0 207 d 2 305
- 81 0 208 d 2 280
- 280 0 209 d 2 278
- 278 0 210 d 2 239
- 239 0 211 d 2 555
- 904 0 212 d 2 363
- 363 0 213 d 2 361
- 361 0 214 d 2 360
- 904 0 215 d 2 459
- 459 0 216 d 2 356
- 356 0 217 d 2 355
- 904 0 218 d 2 353
- 353 0 219 d 2 352
- 352 0 220 d 2 351
- 904 0 221 d 2 558
- 558 0 222 d 2 557
- 557 0 223 d 2 556
- 360 0 224 d 2 658
- 355 0 225 d 2 658
- 351 0 226 d 2 658
- 556 0 227 d 2 658
- 558 0 228 d 2 723
- 723 0 229 d 2 724
- 723 0 230 d 2 725
- 723 0 231 d 2 740
- 81 0 232 d 2 650
- 650 0 233 d 2 682
- 682 0 234 d 2 681
- 681 0 235 d 2 690
- 690 0 236 d 2 643
- 690 0 237 d 2 636
- 636 0 238 d 2 648
- 648 0 239 d 2 734
- 648 0 240 d 2 649
- 649 0 241 d 2 726
- 726 0 242 d 2 689
- 648 0 243 d 2 635
- 689 0 244 d 2 635
- 658 0 245 d 2 739
- 635 0 246 d 2 739
- 658 0 247 d 2 741
- 658 0 248 d 2 727
- 658 0 249 d 2 742
- 658 0 250 d 2 657
- 689 0 251 d 2 657
- 739 0 252 d 2 657
- 741 0 253 d 2 657
- 727 0 254 d 2 657
- 742 0 255 d 2 657
- 657 0 256 d 2 735
- 735 0 257 d 2 743
- 743 0 258 d 2 744
- 744 0 259 d 2 701
- 701 0 260 d 2 731
- 731 0 261 d 2 713
- 713 0 262 d 2 702
- 702 0 263 d 2 703
- 703 0 264 d 2 704
- 704 0 265 d 2 732
- 732 0 266 d 2 738
- 738 0 267 d 2 705
- 705 0 268 d 2 706
- 706 0 269 d 2 707
- 707 0 270 d 2 733
- 733 0 271 d 2 708
- 708 0 272 d 2 709
- 709 0 273 d 2 685
- 685 0 274 d 2 710
- 710 0 275 d 2 711
- 711 0 276 d 2 224
